# Project_Gantt_Chart

Schedule from MS Project, 2018-05-08 to 2018-08-06, A marks actual dates.
Camosun College

## Calendars

- Standard: Mon-Fri 08:00-12:00, 13:00-17:00; Sat-Sun off.

## Resources

| Resource |
| --- |
| Devan |
| Curtis |
| Evan |
| Pat() |
| Pat(TL) |
| Illia |
| Pat |
| Devan() |
| Devan(TL) |
| Curits |
| Evan(TL) |
| Curtis (TL) |

## Schedule

| ID | WBS | Task | Type | Duration | Start | Finish | Predecessors | Complete | Actual finish | Constraint | Resources | Work | Actual work | Task ID |
| --- | --- | --- | --- | --- | --- | --- | --- | --- | --- | --- | --- | --- | --- | --- |
| 1 | 1 | **BiFrost Project** |  | 35d? | 2018-05-08 A | 2018-06-25 |  | 100% | 2018-06-19 |  |  | 1508h | 1508h |  |
| 2 | 1.1 | **Demo 01** |  | 6d? | 2018-05-08 A | 2018-05-15 A |  | 100% |  |  |  | 184h | 184h |  |
| 3 | 1.1.1 | Create Project Charter |  | 6d? | 2018-05-08 A | 2018-05-15 A |  | 100% |  | start no earlier than 2018-05-08 | Devan | 48h | 48h | T01 |
| 4 | 1.1.2 | **BRD Sec 1-4** |  | 1d? | 2018-05-08 A | 2018-05-08 A |  | 100% |  |  |  | 72h | 72h | T02 |
| 5 | 1.1.2.1 | Sec 1 |  | 1d? | 2018-05-08 A | 2018-05-08 A |  | 100% |  |  | Curtis | 8h | 8h | T02.1 |
| 6 | 1.1.2.2 | Sec 2 |  | 1d? | 2018-05-08 A | 2018-05-08 A |  | 100% |  |  | Curtis | 8h | 8h | T02.2 |
| 7 | 1.1.2.3 | Sec 3 |  | 1d? | 2018-05-08 A | 2018-05-08 A |  | 100% |  |  | Curtis; Evan | 16h | 16h | T02.3 |
| 8 | 1.1.2.4 | Sec 4 |  | 1d? | 2018-05-08 A | 2018-05-08 A |  | 100% |  |  | Pat(TL); Curtis; Evan; Devan; Illia | 40h | 40h | T02.4 |
| 9 | 1.1.3 | BRD Complete | milestone | 0d | 2018-05-15 A | 2018-05-15 A |  | 100% |  | finish no earlier than 2018-05-15 |  |  |  | MS01 |
| 10 | 1.1.4 | Create Gantt Chart |  | 6d? | 2018-05-08 A | 2018-05-15 A |  | 100% |  | finish no earlier than 2018-05-15 | Pat(TL) | 48h | 48h | T03 |
| 11 | 1.1.5 | Weekly Task Report |  | 2d? | 2018-05-14 A | 2018-05-15 A |  | 100% |  | start no earlier than 2018-05-14 | Pat(TL) | 16h | 16h | T04 |
| 12 | 1.1.6 | Demo Ready | milestone | 0d | 2018-05-15 A | 2018-05-15 A |  | 100% |  | start no earlier than 2018-05-15 |  |  |  | MS02 |
| 13 | 1.1.7 | Deliverables Ready | milestone | 0d | 2018-05-15 A | 2018-05-15 A |  | 100% |  | start no earlier than 2018-05-15 |  |  |  | MS03 |
| 15 | 1.2 | **Demo 02** |  | 11d? | 2018-05-08 A | 2018-05-22 A |  | 100% |  |  |  | 408h | 408h |  |
| 16 | 1.2.1 | BRD Sec 5 |  | 6d? | 2018-05-15 A | 2018-05-22 A | 4 | 100% |  | start no earlier than 2018-05-15 | Curtis; Illia; Evan | 144h | 144h | T02.5 |
| 17 | 1.2.2 | BRD Sec 6 |  | 6d? | 2018-05-15 A | 2018-05-22 A |  | 100% |  | finish no earlier than 2018-05-22 | Curtis | 48h | 48h | T02.6 |
| 18 | 1.2.3 | BRD put together |  | 1d? | 2018-05-08 A | 2018-05-08 A |  | 100% |  |  | Devan(TL) | 8h | 8h | T02.7 |
| 19 | 1.2.4 | Git Repository Report |  | 6d? | 2018-05-15 A | 2018-05-22 A |  | 100% |  | start no earlier than 2018-05-15 | Devan(TL) | 48h | 48h | T05 |
| 20 | 1.2.5 | **Build DB** |  | 6d? | 2018-05-15 A | 2018-05-22 A |  | 100% |  |  |  | 112h | 112h | T06 |
| 21 | 1.2.5.1 | Table Normalization |  | 1d? | 2018-05-15 A | 2018-05-15 A |  | 100% |  | start no earlier than 2018-05-15 | Evan; Devan(TL) | 16h | 16h | T06.1 |
| 22 | 1.2.5.2 | Create Tables |  | 6d? | 2018-05-15 A | 2018-05-22 A |  | 100% |  | start no earlier than 2018-05-15 | Curtis; Evan | 48h | 48h | T06.2 |
| 23 | 1.2.5.3 | Populate Tables |  | 6d? | 2018-05-15 A | 2018-05-22 A |  | 100% |  | start no earlier than 2018-05-15 | Evan | 48h | 48h | T06.3 |
| 24 | 1.2.6 | DB Complete |  | 6d | 2018-05-15 A | 2018-05-22 A |  | 100% |  | finish no earlier than 2018-05-22 |  |  |  | MS04 |
| 25 | 1.2.7 | Continue Gantt Chart |  | 3d? | 2018-05-18 A | 2018-05-22 A |  | 100% |  | finish no earlier than 2018-05-22 | Devan(TL) | 24h | 24h | T07 |
| 26 | 1.2.8 | Weekly Task Report |  | 3d? | 2018-05-18 A | 2018-05-22 A |  | 100% |  | start no earlier than 2018-05-18 | Devan(TL) | 24h | 24h | T08 |
| 27 | 1.2.9 | Deliverables Ready | milestone | 0d | 2018-05-22 A | 2018-05-22 A |  | 100% |  | start no earlier than 2018-05-22 |  |  |  | MS05 |
| 28 | 1.2.10 | Demo Ready | milestone | 0d | 2018-05-22 A | 2018-05-22 A |  | 100% |  | start no earlier than 2018-05-22 |  |  |  | MS06 |

| ID | WBS | Task | Type | Duration | Start | Finish | Predecessors | Complete | Constraint | Resources | Work | Actual work | Task ID |
| --- | --- | --- | --- | --- | --- | --- | --- | --- | --- | --- | --- | --- | --- |
| 32 | 1.3 | **Demo 03** |  | 16d? | 2018-05-08 A | 2018-05-29 A | 28 | 100% |  |  | 328h | 328h |  |
| 33 | 1.3.1 | Meaningful Data in Database |  | 1d | 2018-05-22 A | 2018-05-22 A |  | 100% |  | Evan(TL) | 8h | 8h | T09 |
| 34 | 1.3.2 | Connect website to database |  | 1d | 2018-05-22 A | 2018-05-22 A |  | 100% |  | Curtis | 8h | 8h | T10 |
| 35 | 1.3.3 | Template HTML/CSS working |  | 1d | 2018-05-22 A | 2018-05-22 A |  | 100% |  | Curtis; Pat | 8h | 8h | T11 |
| 36 | 1.3.4 | **Client can add products to webpage** |  | 3d | 2018-05-23 A | 2018-05-25 A |  | 100% |  | Devan; Evan(TL) | 88h | 88h | T12 |
| 37 | 1.3.4.1 | Client upload page HTML/CSS complete |  | 1d | 2018-05-23 A | 2018-05-23 A | 35 | 100% |  | Devan | 8h | 8h | T12.1 |
| 38 | 1.3.4.2 | Client upload page working (no admin authenication) |  | 2d | 2018-05-24 A | 2018-05-25 A | 37, 34 | 100% |  | Devan; Evan(TL) | 32h | 32h | T12.2 |
| 39 | 1.3.5 | **Main products page working** |  | 2d | 2018-05-22 A | 2018-05-23 A |  | 100% |  | Curtis; Pat; Illia | 112h | 112h | T13 |
| 40 | 1.3.5.1 | HTML/CSS products page complete |  | 2d | 2018-05-22 A | 2018-05-23 A |  | 100% |  | Curtis; Pat | 32h | 32h | T13.1 |
| 41 | 1.3.5.2 | Products page can load from the database |  | 1d | 2018-05-23 A | 2018-05-23 A | 33, 34 | 100% |  | Curtis; Pat | 16h | 16h | T13.2 |
| 42 | 1.3.5.3 | Products can be organized by category |  | 1d | 2018-05-22 A | 2018-05-22 A |  | 100% |  | Curtis; Pat | 16h | 16h | T13.3 |
| 43 | 1.3.6 | **Tune/Update database** |  | 1d? | 2018-05-08 A | 2018-05-08 A |  | 100% |  | Evan(TL) | 8h | 8h | T14 |
| 44 | 1.3.6.1 | Add tables for genres/consoles |  | 1d? | 2018-05-08 A | 2018-05-08 A |  | 100% |  |  |  |  | T14.1 |
| 45 | 1.3.6.2 | Update table names & types |  | 1d? | 2018-05-08 A | 2018-05-08 A |  | 100% |  |  |  |  | T14.2 |
| 46 | 1.3.7 | Continue Gantt Chart |  | 6d? | 2018-05-22 A | 2018-05-29 A |  | 100% | finish no earlier than 2018-05-29 | Evan(TL) | 48h | 48h | T15 |
| 47 | 1.3.8 | Weekly Task Report |  | 6d? | 2018-05-22 A | 2018-05-29 A |  | 100% | finish no earlier than 2018-05-29 | Evan(TL) | 48h | 48h | T16 |
| 48 | 1.3.9 | HTML/CSS Header Template Complete | milestone | 0d | 2018-05-29 A | 2018-05-29 A |  | 100% | finish no earlier than 2018-05-29 |  |  |  | MS04 |
| 49 | 1.3.10 | “Add Products” Page Working | milestone | 0d | 2018-05-29 A | 2018-05-29 A |  | 100% | finish no earlier than 2018-05-29 |  |  |  | MS05 |
| 50 | 1.3.11 | Main Product Display Page Working | milestone | 0d | 2018-05-29 A | 2018-05-29 A |  | 100% | finish no earlier than 2018-05-29 |  |  |  | MS06 |
| 53 | 1.4 | **Demo 04** |  | 6d | 2018-05-29 A | 2018-06-05 A |  | 100% |  |  | 264h | 264h |  |
| 54 | 1.4.1 | **Sign-in** |  | 3d | 2018-05-29 A | 2018-05-31 A |  | 100% |  | Devan; Evan | 80h | 80h |  |
| 55 | 1.4.1.1 | Sign-up Template |  | 1d | 2018-05-29 A | 2018-05-29 A |  | 100% |  | Devan; Evan | 16h | 16h | T17 |
| 56 | 1.4.1.2 | Sign-in Template |  | 1d | 2018-05-29 A | 2018-05-29 A |  | 100% |  | Devan; Evan | 16h | 16h | T18 |
| 57 | 1.4.1.3 | Account Sign-up Available |  | 1d | 2018-05-30 A | 2018-05-31 A | 55 | 100% | finish no earlier than 2018-06-04 |  |  |  | T19 |
| 58 | 1.4.1.4 | Users Can Sign-in to Their Account (Including Admin Accounts) |  | 1d | 2018-05-31 A | 2018-05-31 A | 56 | 100% | finish no earlier than 2018-05-31 |  |  |  | T20 |

| ID | WBS | Task | Type | Duration | Start | Finish | Predecessors | Complete | Actual start | Actual finish | Constraint | Resources | Work | Actual work | Task ID |
| --- | --- | --- | --- | --- | --- | --- | --- | --- | --- | --- | --- | --- | --- | --- | --- |
| 59 | 1.4.2 | **Cart** |  | 6d? | 2018-05-29 A | 2018-06-05 A |  | 100% |  |  |  | Curtis (TL); Pat | 160h | 160h |  |
| 60 | 1.4.2.1 | Shopping Cart Template/Styling |  | 6d | 2018-05-29 A | 2018-06-05 A |  | 100% |  |  | finish no earlier than 2018-06-05 | Pat | 48h | 48h | T21 |
| 61 | 1.4.2.2 | Users Can Add/View Products in Their Shopping Cart |  | 1d | 2018-05-30 A | 2018-05-30 A | 60 | 100% |  |  | finish no earlier than 2018-06-04 | Pat; Curtis (TL) | 16h | 16h | T22 |
| 62 | 1.4.2.3 | Users Can remove Items In Their Shopping Cart |  | 1d | 2018-05-31 A | 2018-05-31 A | 60 | 100% |  |  | finish no earlier than 2018-06-01 | Curtis (TL) | 8h | 8h | T23 |
| 63 | 1.4.2.4 | Users can change the quantity of products in their shopping cart |  | 1d? | 2018-06-01 A | 2018-06-01 A |  | 100% |  |  |  | Curtis (TL) | 8h | 8h | T24 |
| 64 | 1.4.2.5 | Cart is persistant between sessions |  | 2d | 2018-06-02 A | 2018-06-05 A |  | 100% |  |  | finish no earlier than 2018-06-05 | Curtis (TL) | 16h | 16h | T25 |
| 65 | 1.4.3 | Deliverables Ready |  | 3d | 2018-05-31 A | 2018-06-05 A |  | 100% |  |  |  | Curtis (TL) | 24h | 24h | T26 |
| 66 | 1.4.4 | Demo Ready | milestone | 0d | 2018-06-05 A | 2018-06-05 A |  | 100% |  |  | start no earlier than 2018-06-05 | Curtis (TL) |  |  | T27 |
| 67 | 1.4.5 | Users Can Create an Account and Sign-in (Including Admin Accounts) | milestone | 0d | 2018-05-31 A | 2018-05-31 A |  | 100% |  |  | finish no earlier than 2018-06-05 |  |  |  | MS07 |
| 68 | 1.4.6 | Users Can Add Products to Cart and View Them | milestone | 0d | 2018-05-31 A | 2018-05-31 A |  | 100% |  |  | finish no earlier than 2018-06-05 |  |  |  | MS08 |
| 69 | 1.4.7 | Customer Can Remove/Edit Products In Their Cart | milestone | 0d | 2018-06-01 A | 2018-06-01 A |  | 100% |  |  | finish no earlier than 2018-06-05 |  |  |  | MS09 |
| 70 | 1.4.8 | Contents of Shopping Carts Persist Across Sessions and Devices | milestone | 0d | 2018-06-01 A | 2018-06-01 A |  | 100% |  |  |  |  |  |  | MS10 |
| 72 | 1.5 | **Demo 05** |  | 6d | 2018-06-05 | 2018-06-12 A |  | 100% | 2018-05-08 |  |  |  | 180h | 180h |  |
| 73 | 1.5.1 | **Checkout/Billing Info** |  | 6d | 2018-06-05 A | 2018-06-12 |  | 100% |  | 2018-06-07 |  |  | 66h | 66h |  |
| 74 | 1.5.1.1 | Template |  | 1d | 2018-06-05 A | 2018-06-05 A |  | 100% |  |  |  | Devan | 8h | 8h | T28 |
| 75 | 1.5.1.2 | Checkout Process |  | 2d | 2018-06-05 A | 2018-06-06 A |  | 100% |  |  |  | Devan; Evan | 16h | 16h | T29 |
| 76 | 1.5.1.3 | Stripe |  | 2d | 2018-06-06 A | 2018-06-07 A |  | 100% |  |  |  | Devan; Evan; Curtis | 42h | 42h | T30 |
| 77 | 1.5.2 | Terms of Service Req |  | 2d | 2018-06-05 A | 2018-06-06 A |  | 100% |  |  |  | Pat(TL); Evan; Curtis | 42h | 42h | T31 |
| 78 | 1.5.3 | Edit Cart Quantity |  | 1d | 2018-05-08 A | 2018-05-08 A |  | 100% |  |  |  | Curtis | 8h | 8h | T32 |
| 79 | 1.5.4 | Remove/Clear Cart |  | 1d | 2018-05-08 A | 2018-05-08 A |  | 100% |  |  |  | Curtis | 8h | 8h | T33 |
| 80 | 1.5.5 | BRD update |  | 1d | 2018-05-08 A | 2018-05-08 A |  | 100% |  |  |  | Pat(TL) | 8h | 8h | T02 |
| 81 | 1.5.6 | Weekly Task Report |  | 6d | 2018-06-05 A | 2018-06-12 A |  | 100% |  |  | finish no earlier than 2018-06-12 | Pat(TL) | 48h | 48h | T34 |
| 82 | 1.5.7 | Deliverables Ready | milestone | 0d | 2018-06-12 A | 2018-06-12 A |  | 100% |  |  |  |  |  |  | T35 |
| 83 | 1.5.8 | Demo Ready | milestone | 0d | 2018-06-12 A | 2018-06-12 A |  | 100% |  |  | start no earlier than 2018-06-12 |  |  |  | T36 |
| 84 | 1.5.9 | The Online payment occurs at Checkout | milestone | 0d | 2018-06-12 A | 2018-06-12 A |  | 100% |  |  |  |  |  |  | MS11 |

| ID | WBS | Task | Type | Duration | Start | Finish | Complete | Remaining | Actual start | Total slack | Constraint | Resources | Work | Actual work | Task ID |
| --- | --- | --- | --- | --- | --- | --- | --- | --- | --- | --- | --- | --- | --- | --- | --- |
| 87 | 1.6 | **Demo 06** |  | 6d | 2018-06-12 A | 2018-06-19 A | 100% |  |  |  |  |  | 144h | 144h |  |
| 88 | 1.6.1 | **Orders and Billing** |  | 3d | 2018-06-12 A | 2018-06-14 A | 100% |  |  |  |  |  | 128h | 128h |  |
| 89 | 1.6.1.1 | Billing and Order info writes to html |  | 3d | 2018-06-12 A | 2018-06-14 A | 100% |  |  |  |  | Devan; Evan | 48h | 48h | T37 |
| 90 | 1.6.1.2 | Display previous orders to page |  | 3d | 2018-06-12 A | 2018-06-14 A | 100% |  |  |  |  | Curtis; Pat(TL) | 48h | 48h | T38 |
| 91 | 1.6.1.3 | Reciept Table Creation |  | 2d | 2018-06-12 A | 2018-06-13 A | 100% |  |  |  |  | Devan; Evan | 32h | 32h | T39 |
| 92 | 1.6.2 | Final adjustments to CSS |  | 1d | 2018-06-12 A | 2018-06-12 A | 100% |  |  |  |  | Pat(TL) | 8h | 8h | T40 |
| 94 | 1.6.3 | Weekly Task Report |  | 1d | 2018-06-12 A | 2018-06-12 A | 100% |  |  |  |  | Pat(TL) | 8h | 8h | T41 |
| 95 | 1.6.4 | Deliverables Ready | milestone | 0d | 2018-06-19 A | 2018-06-19 A | 100% |  |  |  | start no earlier than 2018-06-19 |  |  |  | T42 |
| 96 | 1.6.5 | Demo Ready | milestone | 0d | 2018-06-19 A | 2018-06-19 A | 100% |  |  |  | start no earlier than 2018-06-19 |  |  |  | T43 |
| 97 | 1.6.6 | Create an HTML file containing the order information | milestone | 0d | 2018-06-19 A | 2018-06-19 A | 100% |  |  |  | start no earlier than 2018-06-19 |  |  |  | MS11 |
| 98 | 1.6.7 | Customers can view Order History | milestone | 0d | 2018-06-19 A | 2018-06-19 A | 100% |  |  |  | start no earlier than 2018-06-19 |  |  |  | MS13 |
| 99 | 1.6.8 | Website has consistant look and feel | milestone | 0d | 2018-06-19 A | 2018-06-19 A | 100% |  |  |  | start no earlier than 2018-06-19 |  |  |  | MS14 |
| 101 | 2 | **Demo 07** |  | 35d | 2018-06-19 | 2018-08-06 | 58% | 14.64d | 2018-05-08 |  |  |  | 534h | 357.73h |  |
| 102 | 2.1 | **Final Presentation** |  | 5d | 2018-06-19 | 2018-06-24 | 58% | 2.09d | 2018-05-08 |  |  |  | 534h | 357.73h |  |
| 103 | 2.1.1 | **Presentation Power Point** |  | 2d | 2018-06-23 A | 2018-06-24 | 20% | 1.6d |  |  |  | Devan; Pat | 60h | 6.4h |  |
| 104 | 2.1.1.1 | Fill in with shortened report info | manual | 2d | 2018-06-23 A | 2018-06-24 | 20% | 1.6d |  |  |  | Devan | 16h | 3.2h | T44 |
| 105 | 2.1.1.2 | Styling and Design | manual | 2d | 2018-06-23 A | 2018-06-24 | 20% | 1.6d |  |  |  | Pat | 16h | 3.2h | T45 |
| 106 | 2.1.2 | **Final Report** |  | 5d | 2018-06-19 A | 2018-06-24 | 66% | 1.7d |  |  |  | Devan; Evan; Curtis (TL); Pat | 410h | 330h |  |
| 107 | 2.1.2.1 | Peer Reviews | manual | 5d | 2018-06-19 A | 2018-06-24 | 50% | 2.5d |  |  |  | Curtis; Devan; Evan; Pat | 150h | 70h | T46 |
| 108 | 2.1.2.2 | **Report** |  | 5d | 2018-06-19 A | 2018-06-23 | 79% | 1.04d |  |  |  | Pat; Evan; Curtis | 112h | 112h | T47 |
| 109 | 2.1.2.2.1 | Project Specifications |  | 1d? | 2018-06-19 A | 2018-06-19 A | 100% |  |  |  |  |  |  |  | -1 |
| 110 | 2.1.2.2.2 | Usability Guide |  | 1d? | 2018-06-19 A | 2018-06-19 | 50% | 0.5d? |  | 34d |  |  |  |  | -2 |
| 111 | 2.1.2.2.3 | Problems and Challenges |  | 1d? | 2018-06-19 A | 2018-06-19 | 75% | 0.25d? |  | 34d |  |  |  |  | -3 |
| 112 | 2.1.2.2.4 | Lessons Learned |  | 1d? | 2018-06-19 A | 2018-06-19 | 75% | 0.25d? |  | 34d |  |  |  |  | -4 |
| 113 | 2.1.2.2.5 | WWYD Differently |  | 1d? | 2018-06-19 A | 2018-06-19 | 75% | 0.25d? |  | 34d |  |  |  |  | -5 |
| 114 | 2.1.2.2.6 | Sample Code |  | 1d? | 2018-06-19 A | 2018-06-19 A | 100% |  |  |  |  |  |  |  |  |

| ID | WBS | Task | Type | Duration | Start | Finish | Complete | Remaining | Actual start | Resources | Work | Actual work | Task ID |
| --- | --- | --- | --- | --- | --- | --- | --- | --- | --- | --- | --- | --- | --- |
| 115 | 2.1.3 | **Website Finishing Touches** |  | 5d | 2018-06-19 | 2018-06-24 | 75% | 1.25d | 2018-05-08 | Curtis (TL) | 64h | 21.33h |  |
| 116 | 2.1.3.1 | style buttons | manual | 1d? | 2018-05-08 A | 2018-05-08 A | 100% |  |  | Curtis (TL) | 8h | 8h | T48 |
| 117 | 2.1.3.2 | style products page | manual | 1d? | 2018-05-08 A | 2018-05-08 A | 100% |  |  | Curtis (TL) | 8h | 8h | T49 |
| 118 | 2.1.3.3 | Add more items to Database | manual | 1d? | 2018-06-23 | 2018-06-23 |  |  |  | Devan | 8h |  | T50 |
| 119 | 2.1.3.4 | YouTube video trailer | manual | 1d | 2018-06-23 A | 2018-06-23 A | 100% |  |  |  |  |  | T51 |
